Schedule from MS Project, 2019-09-10 to 2019-11-14.
Microsoft

## Calendars

- 标准: Mon-Fri 08:00-12:00, 13:00-17:00; Sat-Sun off.

## Resources

| Resource |
| --- |
| 白旦旦 |
| 宁飞飞 |
| 李彬 |
| 田坤 |
| 于凯 |
| 蒋海田 |
| 蔚鹏 |
| 王玮 |
| 庞化 |
| 王宏 |
| 呼伟 |

## Schedule

| ID | WBS | Task | Duration | Start | Finish | Predecessors | Total slack | Free slack | Constraint | Resources | Work |
| --- | --- | --- | --- | --- | --- | --- | --- | --- | --- | --- | --- |
| 1 | 1 | 技术选型 | 3d | 2019-09-10 | 2019-09-13 |  | 7d | 0d | start no earlier than 2019-09-10 | 白旦旦 | 24h |
| 2 | 2 | 框架搭建 | 5d | 2019-09-13 | 2019-09-20 | 1 | 39d |  |  | 白旦旦 | 40h |
| 3 | 3 | 技术预研 | 5d | 2019-09-13 | 2019-09-20 | 1 | 7d | 0d |  | 白旦旦; 呼伟; 蒋海田; 李彬; 宁飞飞; 庞化; 田坤; 王宏; 王玮; 蔚鹏; 于凯 | 440h |
| 4 | 4 | **编码阶段** | 32d | 2019-09-20 | 2019-11-05 |  | 0d |  |  |  | 7328h |
| 5 | 4.1 | **相机拍摄** | 29d | 2019-09-20 | 2019-10-31 |  | 3d |  |  | 白旦旦; 宁飞飞 | 1536h |
| 6 | 4.1.1 | **自定义相机** | 14d | 2019-09-20 | 2019-10-10 |  | 15d |  |  | 宁飞飞 | 184h |
| 7 | 4.1.1.1 | 相机界面布局 | 2d | 2019-09-20 | 2019-09-24 | 3 | 25d | 0d |  | 宁飞飞 | 16h |
| 8 | 4.1.1.2 | 相机拍摄预览 | 3d | 2019-09-24 | 2019-09-27 | 7 | 25d | 0d |  | 宁飞飞 | 24h |
| 9 | 4.1.1.3 | 相机图片数据获取 | 2d | 2019-09-27 | 2019-10-01 | 8 | 25d |  |  | 宁飞飞 | 16h |
| 10 | 4.1.1.4 | 相机图片保存 | 2d | 2019-10-08 | 2019-10-10 |  | 3d | 0d | start no earlier than 2019-10-08 | 宁飞飞 | 16h |
| 11 | 4.1.2 | **滤镜** | 25d | 2019-09-20 | 2019-10-25 |  | 7d |  |  | 白旦旦 | 600h |
| 12 | 4.1.2.1 | **基础滤镜** | 16d | 2019-09-20 | 2019-10-14 |  | 7d |  |  | 白旦旦 | 256h |
| 13 | 4.1.2.1.1 | 基础滤镜模块设计与实现 | 4d | 2019-09-20 | 2019-09-26 | 3 | 7d | 0d |  | 白旦旦 | 32h |
| 14 | 4.1.2.1.2 | 实现基础滤镜（可以先实现部分，供其他模块调用） | 9d | 2019-09-26 | 2019-10-09 | 13 | 7d | 0d |  | 白旦旦 | 72h |
| 15 | 4.1.2.1.3 | 与其他模块使用联调 | 3d | 2019-10-09 | 2019-10-14 | 14 | 7d | 0d |  | 白旦旦 | 24h |
| 16 | 4.1.2.2 | **美颜** | 9d | 2019-10-14 | 2019-10-25 |  | 7d |  |  | 白旦旦 | 144h |
| 17 | 4.1.2.2.1 | 美颜模块设计与实现 | 4d | 2019-10-14 | 2019-10-18 | 15 | 7d | 0d |  | 白旦旦 | 32h |
| 18 | 4.1.2.2.2 | 实现美颜效果（等级1-7级） | 3d | 2019-10-18 | 2019-10-23 | 17 | 7d | 0d |  | 白旦旦 | 24h |
| 19 | 4.1.2.2.3 | 美颜功能bug修改 | 2d | 2019-10-23 | 2019-10-25 | 18 | 7d |  |  | 白旦旦 | 16h |
| 20 | 4.1.3 | **拍照图片设置** | 6d | 2019-10-10 | 2019-10-18 |  | 3d |  |  | 宁飞飞 | 144h |
| 21 | 4.1.3.1 | **照片画幅设置** | 3d | 2019-10-10 | 2019-10-15 |  | 3d |  |  | 宁飞飞 | 48h |
| 22 | 4.1.3.1.1 | 推荐画幅 | 1d | 2019-10-10 | 2019-10-11 | 10 | 3d | 0d |  | 宁飞飞 | 8h |
| 23 | 4.1.3.1.2 | 自定义画幅 | 2d | 2019-10-11 | 2019-10-15 | 22 | 3d | 0d |  | 宁飞飞 | 16h |
| 24 | 4.1.3.2 | **灰度设置** | 3d | 2019-10-15 | 2019-10-18 |  | 3d |  |  | 宁飞飞 | 48h |
| 25 | 4.1.3.2.1 | 推荐灰度 | 1d | 2019-10-15 | 2019-10-16 | 23 | 3d | 0d |  | 宁飞飞 | 8h |
| 26 | 4.1.3.2.2 | 自定义灰度 | 2d | 2019-10-16 | 2019-10-18 | 25 | 3d | 0d |  | 宁飞飞 | 16h |

| ID | WBS | Task | Duration | Start | Finish | Predecessors | Total slack | Free slack | Constraint | Resources | Work |
| --- | --- | --- | --- | --- | --- | --- | --- | --- | --- | --- | --- |
| 27 | 4.1.4 | **萌拍** | 9d | 2019-10-18 | 2019-10-31 |  | 3d |  |  | 宁飞飞 | 144h |
| 28 | 4.1.4.1 | 人脸识别模块设计和实现 | 5d | 2019-10-18 | 2019-10-25 | 26 | 3d | 0d |  | 宁飞飞 | 40h |
| 29 | 4.1.4.2 | 结合模板进行萌拍 | 4d | 2019-10-25 | 2019-10-31 | 28 | 3d |  |  | 宁飞飞 | 32h |
| 30 | 4.2 | **相册图片编辑** | 24d | 2019-09-20 | 2019-10-24 |  | 8d |  |  | 李彬; 田坤; 蔚鹏 | 1480h |
| 31 | 4.2.1 | **裁剪** | 19d | 2019-09-20 | 2019-10-17 |  | 13d |  |  | 李彬 | 248h |
| 32 | 4.2.1.1 | 裁剪模块设计与实现 | 3d | 2019-09-20 | 2019-09-25 | 3 | 26d | 0d |  | 李彬 | 24h |
| 33 | 4.2.1.2 | 界面布局和逻辑 | 2d | 2019-09-25 | 2019-09-27 | 32 | 26d | 0d |  | 李彬 | 16h |
| 34 | 4.2.1.3 | 自由裁剪 | 1d | 2019-09-27 | 2019-09-30 | 33 | 26d |  |  | 李彬 | 8h |
| 35 | 4.2.1.4 | 全屏裁剪 | 1d | 2019-10-09 | 2019-10-10 |  | 8d | 0d | start no earlier than 2019-10-09 | 李彬 | 8h |
| 36 | 4.2.1.5 | 推荐比例裁剪（1:1 3:4 4:3 16:9 9:16） | 5d | 2019-10-10 | 2019-10-17 | 35 | 8d | 0d |  | 李彬 | 40h |
| 37 | 4.2.2 | **基础滤镜** | 5d | 2019-10-17 | 2019-10-24 |  | 8d |  |  | 李彬 | 80h |
| 38 | 4.2.2.1 | 界面布局 | 2d | 2019-10-17 | 2019-10-21 | 36 | 8d | 0d |  | 李彬 | 16h |
| 39 | 4.2.2.2 | 使用基础滤镜模块接口完成逻辑 | 3d | 2019-10-21 | 2019-10-24 | 38 | 8d |  |  | 李彬 | 24h |
| 40 | 4.2.3 | **贴纸** | 20d | 2019-09-20 | 2019-10-18 |  | 12d |  |  | 蔚鹏 | 328h |
| 41 | 4.2.3.1 | 贴纸模块设计与实现 | 3d | 2019-09-20 | 2019-09-25 | 3 | 25d | 0d |  | 蔚鹏 | 24h |
| 42 | 4.2.3.2 | 贴纸库--做好设计和实现 | 2d | 2019-09-25 | 2019-09-27 | 41 | 25d | 0d |  | 蔚鹏 | 16h |
| 43 | 4.2.3.3 | 自定义贴纸 | 2d | 2019-09-27 | 2019-10-01 | 42 | 25d |  | start no earlier than 2019-09-27 | 蔚鹏 | 16h |
| 44 | 4.2.3.4 | 贴纸透明度 | 2d | 2019-10-08 | 2019-10-10 |  | 10d | 0d | start no earlier than 2019-10-08 | 蔚鹏 | 16h |
| 45 | 4.2.3.5 | **橡皮擦** | 6d | 2019-10-10 | 2019-10-18 |  | 10d |  |  | 蔚鹏 | 96h |
| 46 | 4.2.3.5.1 | 橡皮擦模块设计与实现 | 2d | 2019-10-10 | 2019-10-14 | 44 | 10d | 0d |  | 蔚鹏 | 16h |
| 47 | 4.2.3.5.2 | 尺寸调节 | 1d | 2019-10-14 | 2019-10-15 | 46 | 10d | 0d |  | 蔚鹏 | 8h |
| 48 | 4.2.3.5.3 | 硬度调节 | 1d | 2019-10-15 | 2019-10-16 | 47 | 10d | 0d |  | 蔚鹏 | 8h |
| 49 | 4.2.3.5.4 | 擦除 | 1d | 2019-10-16 | 2019-10-17 | 48 | 10d | 0d |  | 蔚鹏 | 8h |
| 50 | 4.2.3.5.5 | 恢复 | 1d | 2019-10-17 | 2019-10-18 | 49 | 10d | 0d |  | 蔚鹏 | 8h |

| ID | WBS | Task | Duration | Start | Finish | Predecessors | Total slack | Free slack | Constraint | Resources | Work |
| --- | --- | --- | --- | --- | --- | --- | --- | --- | --- | --- | --- |
| 51 | 4.2.4 | **灰度** | 2d | 2019-10-18 | 2019-10-22 |  | 10d |  |  | 蔚鹏 | 32h |
| 52 | 4.2.4.1 | 界面布局 | 1d | 2019-10-18 | 2019-10-21 | 50 | 10d | 0d |  | 蔚鹏 | 8h |
| 53 | 4.2.4.2 | 使用灰度模块完成逻辑 | 1d | 2019-10-21 | 2019-10-22 | 52 | 10d |  |  | 蔚鹏 | 8h |
| 54 | 4.2.5 | **文字** | 17d | 2019-09-20 | 2019-10-15 |  | 15d |  |  | 田坤 | 216h |
| 55 | 4.2.5.1 | 文字模块设计与实现 | 3d | 2019-09-20 | 2019-09-25 | 3 | 26d | 0d |  | 田坤 | 24h |
| 56 | 4.2.5.2 | 自定义水印 | 2d | 2019-09-25 | 2019-09-27 | 55 | 26d | 0d |  | 田坤 | 16h |
| 57 | 4.2.5.3 | 文字大小设置 | 1d | 2019-09-27 | 2019-09-30 | 56 | 26d |  |  | 田坤 | 8h |
| 58 | 4.2.5.4 | 文字字体 | 4d | 2019-10-09 | 2019-10-15 |  | 7d | 0d | start no earlier than 2019-10-09 | 田坤 | 32h |
| 59 | 4.3 | **历史图片美化** | 32d | 2019-09-20 | 2019-11-05 |  | 0d |  |  | 呼伟; 庞化; 王宏; 王玮; 蔚鹏; 于凯 | 3432h |
| 60 | 4.3.1 | **智能优化** | 21d | 2019-09-20 | 2019-10-21 |  | 11d |  |  | 王玮 | 288h |
| 61 | 4.3.1.1 | 智能优化模块设计与实现 | 4d | 2019-09-20 | 2019-09-26 | 3 | 26d | 0d |  | 王玮 | 32h |
| 62 | 4.3.1.2 | 实现各种优化效果（前两种） | 2d | 2019-09-26 | 2019-09-30 | 61 | 26d |  |  | 王玮 | 16h |
| 63 | 4.3.1.3 | 实现各种优化效果（后面所有的） | 5d | 2019-10-08 | 2019-10-15 |  | 6d | 0d | start no earlier than 2019-10-08 | 王玮 | 40h |
| 64 | 4.3.1.4 | 做好智能优化扩展接口 | 4d | 2019-10-15 | 2019-10-21 | 63 | 6d | 0d |  | 王玮 | 32h |
| 65 | 4.3.2 | **编辑** | 8d | 2019-10-24 | 2019-11-05 |  | 0d |  |  | 蔚鹏; 于凯 | 256h |
| 66 | 4.3.2.1 | **裁剪** | 3d | 2019-10-24 | 2019-10-29 |  | 0d |  |  | 于凯 | 48h |
| 67 | 4.3.2.1.1 | 界面布局 | 2d | 2019-10-24 | 2019-10-28 | 118 | 0d |  |  | 于凯 | 16h |
| 68 | 4.3.2.1.2 | 结合裁剪模块接口完成逻辑 | 1d | 2019-10-28 | 2019-10-29 | 67 | 0d |  |  | 于凯 | 8h |
| 69 | 4.3.2.2 | **旋转** | 5d | 2019-10-29 | 2019-11-05 |  | 0d |  |  | 蔚鹏 | 80h |
| 70 | 4.3.2.2.1 | 旋转模块设计与实现 | 2d | 2019-10-29 | 2019-10-31 | 68 | 0d |  |  | 蔚鹏 | 16h |
| 71 | 4.3.2.2.2 | 推荐角度旋转 | 1d | 2019-10-31 | 2019-11-01 | 70 | 0d |  |  | 蔚鹏 | 8h |
| 72 | 4.3.2.2.3 | 自由旋转 | 2d | 2019-11-01 | 2019-11-05 | 71 | 0d |  |  | 蔚鹏 | 16h |
| 73 | 4.3.3 | **增强** | 24d | 2019-09-20 | 2019-10-24 |  | 8d |  |  | 庞化 | 528h |
| 74 | 4.3.3.1 | **光效** | 17d | 2019-09-20 | 2019-10-15 |  | 15d |  |  | 庞化 | 224h |
| 75 | 4.3.3.1.1 | 光效模块设计与实现 | 3d | 2019-09-20 | 2019-09-25 | 3 | 26d | 0d |  | 庞化 | 24h |
| 76 | 4.3.3.1.2 | 实现各种光效调整功能（智能补光、亮度、对比度） | 3d | 2019-09-25 | 2019-09-30 | 75 | 26d |  |  | 庞化 | 24h |
| 77 | 4.3.3.1.3 | 实现各种光效调整功能（高光调节、暗部改善、褪色） | 3d | 2019-10-08 | 2019-10-11 |  | 3d | 0d | start no earlier than 2019-10-08 | 庞化 | 24h |
| 78 | 4.3.3.1.4 | 提供光效扩展接口 | 2d | 2019-10-11 | 2019-10-15 | 77 | 3d | 0d |  | 庞化 | 16h |

| ID | WBS | Task | Duration | Start | Finish | Predecessors | Total slack | Free slack | Constraint | Resources | Work |
| --- | --- | --- | --- | --- | --- | --- | --- | --- | --- | --- | --- |
| 79 | 4.3.3.2 | **色彩** | 7d | 2019-10-15 | 2019-10-24 |  | 3d |  |  | 庞化 | 112h |
| 80 | 4.3.3.2.1 | 色彩模块设计与实现 | 3d | 2019-10-15 | 2019-10-18 | 78 | 3d | 0d |  | 庞化 | 24h |
| 81 | 4.3.3.2.2 | 实现各种色彩调整功能（饱和度、色温、色调、色调分离） | 4d | 2019-10-18 | 2019-10-24 | 80 | 3d | 0d |  | 庞化 | 32h |
| 82 | 4.3.4 | **基础滤镜** | 5d | 2019-10-21 | 2019-10-28 |  | 6d |  |  | 王玮 | 80h |
| 83 | 4.3.4.1 | 界面布局 | 3d | 2019-10-21 | 2019-10-24 | 64 | 6d | 0d |  | 王玮 | 24h |
| 84 | 4.3.4.2 | 结合基础滤镜模块的接口完成逻辑 | 2d | 2019-10-24 | 2019-10-28 | 83 | 6d |  |  | 王玮 | 16h |
| 85 | 4.3.5 | **边框** | 7d | 2019-09-20 | 2019-10-01 |  | 25d |  |  | 呼伟 | 112h |
| 86 | 4.3.5.1 | 边框模块设计与实现 | 3d | 2019-09-20 | 2019-09-25 | 3 | 25d | 0d |  | 呼伟 | 24h |
| 87 | 4.3.5.2 | 自定义边框实现（包括形状、宽度、颜色和大小） | 2d | 2019-09-25 | 2019-09-27 | 86 | 25d | 0d |  | 呼伟 | 16h |
| 88 | 4.3.5.3 | 提供边框扩展接口 | 2d | 2019-09-27 | 2019-10-01 | 87 | 25d |  |  | 呼伟 | 16h |
| 89 | 4.3.6 | **涂鸦笔** | 24d | 2019-09-20 | 2019-10-24 |  | 8d |  |  | 王宏 | 504h |
| 90 | 4.3.6.1 | **涂鸦笔** | 17d | 2019-09-20 | 2019-10-15 |  | 15d |  |  | 王宏 | 224h |
| 91 | 4.3.6.1.1 | 涂鸦笔模块设计与实现 | 3d | 2019-09-20 | 2019-09-25 | 3 | 26d | 0d |  | 王宏 | 24h |
| 92 | 4.3.6.1.2 | 自由涂鸦 | 3d | 2019-09-25 | 2019-09-30 | 91 | 26d |  |  | 王宏 | 24h |
| 93 | 4.3.6.1.3 | 涂鸦库（完成直线、虚线、圆、三角形、path的选择和设置） | 5d | 2019-10-08 | 2019-10-15 |  | 8d | 0d | start no earlier than 2019-10-08 | 王宏 | 40h |
| 94 | 4.3.6.2 | **橡皮擦** | 4d | 2019-10-15 | 2019-10-21 |  | 8d |  |  | 王宏 | 64h |
| 95 | 4.3.6.2.1 | 界面布局 | 2d | 2019-10-15 | 2019-10-17 | 93 | 8d | 0d |  | 王宏 | 16h |
| 96 | 4.3.6.2.2 | 使用橡皮擦模块接口实现逻辑 | 2d | 2019-10-17 | 2019-10-21 | 95 | 8d | 0d |  | 王宏 | 16h |
| 97 | 4.3.6.3 | 涂鸦笔与其他使用模块联调 | 3d | 2019-10-21 | 2019-10-24 | 96 | 8d |  |  | 王宏 | 24h |
| 98 | 4.3.7 | **贴纸** | 5d | 2019-10-24 | 2019-10-31 |  | 3d |  |  | 庞化 | 80h |
| 99 | 4.3.7.1 | 界面布局 | 2d | 2019-10-24 | 2019-10-28 | 81 | 3d | 0d |  | 庞化 | 16h |
| 100 | 4.3.7.2 | 使用贴纸模块接口实现逻辑 | 3d | 2019-10-28 | 2019-10-31 | 99 | 3d |  |  | 庞化 | 24h |
| 101 | 4.3.8 | **文字** | 6d | 2019-10-09 | 2019-10-17 |  | 13d |  |  |  | 48h |
| 102 | 4.3.8.1 | 界面布局 | 2d | 2019-10-09 | 2019-10-11 |  | 13d | 0d | start no earlier than 2019-10-09 | 呼伟 | 16h |
| 103 | 4.3.8.2 | 使用贴纸模块接口实现逻辑 | 4d | 2019-10-11 | 2019-10-17 | 102 | 13d |  |  | 呼伟 | 32h |

| ID | WBS | Task | Duration | Start | Finish | Predecessors | Total slack | Free slack | Constraint | Resources | Work |
| --- | --- | --- | --- | --- | --- | --- | --- | --- | --- | --- | --- |
| 104 | 4.4 | **拼图** | 25d | 2019-09-20 | 2019-10-25 |  | 7d |  |  |  | 688h |
| 105 | 4.4.1 | **平铺（模板）** | 18d | 2019-09-20 | 2019-10-16 |  | 14d |  |  | 蒋海田 | 240h |
| 106 | 4.4.1.1 | 平铺拼图模块设计与实现 | 3d | 2019-09-20 | 2019-09-25 | 3 | 26d | 0d |  | 蒋海田 | 24h |
| 107 | 4.4.1.2 | 各种平铺效果实现（根据模板，选择图片数量2、3、4张） | 3d | 2019-09-25 | 2019-09-30 | 106 | 26d |  |  | 蒋海田 | 24h |
| 108 | 4.4.1.3 | 各种平铺效果实现（根据模板，选择图片数量5、6、7、8、9张） | 5d | 2019-10-08 | 2019-10-15 |  | 7d | 0d | start no earlier than 2019-10-08 | 蒋海田 | 40h |
| 109 | 4.4.1.4 | 提供外部扩展接口 | 1d | 2019-10-15 | 2019-10-16 | 108 | 7d | 0d |  | 蒋海田 | 8h |
| 110 | 4.4.2 | **拼接（模板）** | 7d | 2019-10-16 | 2019-10-25 |  | 7d |  |  | 蒋海田 | 112h |
| 111 | 4.4.2.1 | 拼接拼图模块设计与实现 | 2d | 2019-10-16 | 2019-10-18 | 109 | 7d | 0d |  | 蒋海田 | 16h |
| 112 | 4.4.2.2 | 各种拼接效果实现（根据模板） | 3d | 2019-10-18 | 2019-10-23 | 111 | 7d | 0d |  | 蒋海田 | 24h |
| 113 | 4.4.2.3 | 提供外部扩展接口 | 2d | 2019-10-23 | 2019-10-25 | 112 | 7d |  |  | 蒋海田 | 16h |
| 114 | 4.4.3 | **自由拼图（叠加）** | 24d | 2019-09-20 | 2019-10-24 |  | 8d |  |  | 于凯 | 336h |
| 115 | 4.4.3.1 | 自由拼图模块设计与实现 | 3d | 2019-09-20 | 2019-09-25 | 3 | 25d | 0d |  | 于凯 | 24h |
| 116 | 4.4.3.2 | 实现自由拼图（叠加）的图片层设计 | 4d | 2019-09-25 | 2019-10-01 | 115 | 25d |  |  | 于凯 | 32h |
| 117 | 4.4.3.3 | 实现自由叠加拼接功能 | 8d | 2019-10-09 | 2019-10-21 |  | 0d |  | start no earlier than 2019-10-09 | 于凯 | 64h |
| 118 | 4.4.3.4 | 提供外部扩展接口 | 3d | 2019-10-21 | 2019-10-24 | 117 | 0d |  |  | 于凯 | 24h |
| 119 | 4.5 | **图片保存和分享** | 8d | 2019-10-15 | 2019-10-25 |  | 7d |  |  | 田坤 | 192h |
| 120 | 4.5.1 | **图片保存** | 5d | 2019-10-15 | 2019-10-22 |  | 7d |  |  | 田坤 | 80h |
| 121 | 4.5.1.1 | 图片保存至系统相册 | 3d | 2019-10-15 | 2019-10-18 | 58 | 7d | 0d |  | 田坤 | 24h |
| 122 | 4.5.1.2 | 将保存的图片信息记录到本地数据库，作为历史图片的依据 | 2d | 2019-10-18 | 2019-10-22 | 121 | 7d | 0d |  | 田坤 | 16h |
| 123 | 4.5.2 | **图片分享到第三方** | 3d | 2019-10-22 | 2019-10-25 |  | 7d |  |  | 田坤 | 48h |
| 124 | 4.5.2.1 | 使用一键分享到第三方app | 3d | 2019-10-22 | 2019-10-25 | 122 | 7d |  |  | 田坤 | 24h |
| 125 | 5 | 调试测试阶段 | 7d | 2019-11-05 | 2019-11-14 | 4 | 0d |  | finish no earlier than 2019-11-08 | 白旦旦; 呼伟; 蒋海田; 李彬; 宁飞飞; 庞化; 田坤; 王宏; 王玮; 蔚鹏; 于凯 | 616h |
